# BLUEsatProjectPlan

Schedule from MS Project, 2012-01-14 to 2013-02-28, scheduled back from the finish, 24 hours a day, A marks actual dates.

## Calendars

- 24 Hours: Mon-Sun 00:00-24:00.

## Resources

| Resource |
| --- |
| PCB Team |
| Mechanical Team |
| Radio Team |
| Software Team |
| Payload Team |
| Executive |
| Power Team |
| Testing Team |
| External |

## Schedule

| ID | WBS | Task | Type | Duration | Start | Finish | Predecessors | Complete | Remaining | Constraint | Resources | Work | Actual work | Product Point |
| --- | --- | --- | --- | --- | --- | --- | --- | --- | --- | --- | --- | --- | --- | --- |
| 1 | 1 | **Documentation** |  | 411.38d | 2012-01-14 | 2013-02-28 |  |  |  | as late as possible |  |  |  |  |
| 2 | 1.1 | <New Task> | manual | 0.33d | 2013-02-28 | 2013-02-28 |  |  |  |  |  |  |  |  |
| 3 | 2 | **Design, Testing and Analysis** |  | 30w | 2012-01-14 A | 2012-08-11 |  | 68% | 9.72w | as late as possible |  | 94764h | 30056h |  |
| 4 | 2.1 | Amateur Radio Licensing - Preparation and Testing | manual | 26.43w | 2012-01-28 A | 2012-07-31 |  | 75% | 6.61w | as late as possible |  |  |  |  |
| 5 | 2.2 | **Integration Rig (Flatsat)** |  | 6w | 2012-01-14 A | 2012-02-25 |  | 99% | 0w | as late as possible | Executive; Payload Team; PCB Team; Power Team; Radio Team; Software Team; Testing Team | 7056h |  |  |
| 6 | 2.2.1 | Driver Development | manual | 3w | 2012-01-14 A | 2012-02-04 A |  | 100% |  |  |  |  |  | B4 |
| 7 | 2.2.2 | BCR Prototype creation and testing | manual | 3w | 2012-01-14 A | 2012-02-04 A |  | 100% |  | as late as possible |  |  |  | B1.1.2 |
| 8 | 2.2.3 | Bus board routing | manual | 3w | 2012-01-14 A | 2012-02-04 A |  | 100% |  | as late as possible |  |  |  |  |
| 9 | 2.2.4 | Rig Construction | manual | 3w | 2012-02-04 A | 2012-02-25 A | 7, 8 | 100% |  | as late as possible |  |  |  |  |
| 10 | 2.2.5 | Communications Testing | manual | 3w | 2012-02-04 A | 2012-02-25 A | 6, 9SS | 100% |  | as late as possible |  |  |  | B3 |
| 11 | 2.3 | **Feasbility Investigation** |  | 7.05w | 2012-02-25 A | 2012-04-14 |  | 99% | 0w | as late as possible | Executive | 3555h | 2370h |  |
| 12 | 2.3.1 | Standalone Camera evaluation | manual | 7.05w | 2012-02-25 A | 2012-04-14 A |  | 100% |  |  | Executive | 1185h | 1185h |  |
| 13 | 2.3.2 | Namuru Evaluation | manual | 7.05w | 2012-02-25 A | 2012-04-14 A |  | 100% |  | as late as possible | Executive | 1185h | 1185h |  |
| 14 | 2.4 | **Design Finalisation** |  | 24.05w | 2012-02-25 A | 2012-08-11 | 5SS | 57% | 10.24w | as late as possible | Mechanical Team; Payload Team; PCB Team; Power Team; Radio Team; Software Team | 54894h | 16127.5h |  |
| 15 | 2.4.1 | Software Application Level Dvelopment | manual | 168.38d | 2012-02-25 A | 2012-08-11 |  | 80% | 33.67d | as late as possible | Software Team | 4041h | 3232.8h | B4 |
| 16 | 2.4.2 | Beaglebone L4 software development | manual | 168.38d | 2012-02-25 A | 2012-08-11 |  | 25% | 126.28d | as late as possible | Payload Team; Software Team | 8082h | 2020.5h | 3.2 |
| 17 | 2.4.3 | Beagle Bone design integration | manual | 8w | 2012-02-25 A | 2012-04-21 |  | 50% | 4w | as late as possible | PCB Team; Payload Team | 2688h | 1344h | 3.1 |
| 18 | 2.4.4 | Battery Charge design finalisation | manual | 18.05w | 2012-02-25 A | 2012-06-30 |  | 75% | 4.51w | as late as possible | Power Team | 3033h | 2274.75h | B.1.1.2 |
| 19 | 2.4.5 | Antennae Foothold, Mounting and Material | manual | 4w | 2012-06-30 A | 2012-07-28 |  | 50% | 2w | as late as possible | Mechanical Team; Radio Team | 1344h | 672h | B.5.2.4 |
| 20 | 2.4.6 | Solar Panel Routing and Mounting | manual | 42.38d | 2012-04-06 A | 2012-05-19 A |  | 100% |  | as late as possible | Power Team; Mechanical Team | 2034h | 2034h | B.5.2.2 |
| 21 | 2.4.7 | Telemetry sensor mounting and distribution | manual | 28.38d | 2012-04-21 A | 2012-05-19 A |  | 100% |  | as late as possible | PCB Team | 681h | 681h | B.5.1.1 |
| 22 | 2.4.8 | Tray 2 PCB Layout and Routing | manual | 10w | 2012-05-19 A | 2012-07-28 | 20, 18 | 40% | 6w | as late as possible | Mechanical Team; PCB Team | 3360h | 1344h |  |
| 23 | 2.4.9 | Battery Mount Design | manual | 12w | 2012-05-05 A | 2012-07-28 | 20 | 50% | 6w | as late as possible | Power Team; Mechanical Team | 4032h | 2016h | B5.1.2 |
| 24 | 2.4.10 | Wiring Harness | manual | 4.05w | 2012-06-30 A | 2012-07-28 | 22, 20 | 50% | 2.03w |  | PCB Team | 681h | 340.5h |  |
| 25 | 2.4.11 | Tray 4 PCB Layout and Routing | manual | 4w | 2012-07-14 A | 2012-08-11 | 13, 17 | 25% | 3w | as late as possible | PCB Team | 672h | 168h |  |

| ID | WBS | Task | Type | Duration | Start | Finish | Predecessors | Complete | Remaining | Total slack | Free slack | Constraint | Resources | Work | Actual work | Product Point |
| --- | --- | --- | --- | --- | --- | --- | --- | --- | --- | --- | --- | --- | --- | --- | --- | --- |
| 26 | 2.5 | **Testing, Simulation and Evaluation - Electrical** |  | 24.05w | 2012-02-25 A | 2012-08-11 |  | 71% | 6.99w |  |  | as late as possible | Testing Team; Radio Team | 15138h | 5006.4h |  |
| 27 | 2.5.1 | Bent Pipe RF testing | manual | 2w | 2012-02-25 A | 2012-03-10 A |  | 100% |  |  |  | as late as possible | Radio Team | 336h | 336h |  |
| 28 | 2.5.2 | Telecommand Testing | manual | 12w | 2012-03-17 A | 2012-06-09 |  | 90% | 1.2w |  |  | as late as possible | Radio Team | 2016h | 1814.4h | B4 |
| 29 | 2.5.3 | Regulator and LDO characterisation | manual | 4w | 2012-02-25 A | 2012-03-24 A |  | 100% |  |  |  | as late as possible | Testing Team | 672h | 672h | B.1.2.1 |
| 30 | 2.5.4 | Communicaitions power characterisation | manual | 4w | 2012-03-24 A | 2012-04-21 A |  | 100% |  |  |  | as late as possible | Testing Team | 672h | 672h | B.1.2.1 |
| 31 | 2.5.5 | Telemetry testing and power characterisation | manual | 4w | 2012-04-21 A | 2012-05-19 |  | 50% | 2w |  |  | as late as possible | Testing Team | 672h | 336h | B.1.2.1 |
| 32 | 2.5.6 | CSC power characterisation | manual | 4w | 2012-05-19 A | 2012-06-16 |  | 50% | 2w |  |  | as late as possible | Testing Team | 672h | 336h | B.1.2.1 |
| 33 | 2.5.7 | Battery testing and charecterisation | manual | 4w | 2012-06-16 A | 2012-07-14 | 18 | 75% | 1w |  |  |  | Testing Team | 672h | 504h | B.1.2.2 and B.1.1.2 |
| 34 | 2.5.8 | Beagle Bone power charecterisation | manual | 4w | 2012-07-07 | 2012-08-04 | 17 |  |  |  |  | as late as possible | Testing Team | 672h |  | B.1.2.1 |
| 35 | 2.5.9 | Solar BCR integration testing | manual | 4w | 2012-07-14 A | 2012-08-11 | 18 | 50% | 2w |  |  | as late as possible | Power Team | 672h | 336h | B.1.1 |
| 36 | 2.6 | **Simulation - Mechanical** |  | 30.05w | 2012-01-14 A | 2012-08-11 |  | 66% | 10.25w |  |  | as late as possible | Mechanical Team | 14121h | 6552h |  |
| 37 | 2.6.1 | Structural and Thermal model creation | manual | 3w | 2012-01-14 A | 2012-02-04 A |  | 100% |  |  |  | as late as possible | Mechanical Team | 504h | 504h | B5 |
| 38 | 2.6.2 | Structural stress research and Investigation | manual | 10w | 2012-02-04 A | 2012-04-14 A |  | 100% |  |  |  | as late as possible | Mechanical Team | 1680h | 1680h | B5.2 |
| 39 | 2.6.3 | Thermal Environmental research | manual | 10w | 2012-02-04 A | 2012-04-14 A |  | 100% |  |  |  | as late as possible | Mechanical Team; Testing Team | 3360h | 3360h | B5.1 |
| 40 | 2.6.4 | Model Touch up | manual | 9w | 2012-04-14 A | 2012-06-16 | 37, 38, 39 | 50% | 4.5w |  |  | as late as possible | Mechanical Team | 1512h | 756h | B5 |
| 41 | 2.6.5 | Component thermal research | manual | 3w | 2012-06-16 A | 2012-07-07 | 29, 30, 31, 32 | 50% | 1.5w |  |  | as late as possible | Mechanical Team | 504h | 252h | B5.1 |
| 42 | 2.6.6 | Final structural simulation | manual | 4w | 2012-07-07 | 2012-08-04 | 40, 38 |  |  |  |  | as late as possible | Mechanical Team | 672h |  | B5.2 |
| 43 | 2.6.7 | Final thermal simulation | manual | 4w | 2012-07-07 | 2012-08-04 | 39, 41, 40 |  |  |  |  | as late as possible | Mechanical Team | 672h |  | B5.1 |
| 44 | 2.6.8 | Critical Design Review |  | 1w | 2012-08-04 | 2012-08-11 |  |  |  | 203.38d | 0d | as late as possible | Executive | 168h |  |  |
| 45 | 3 | **Production and Final Functional Testing** |  | 12w | 2012-08-18 | 2012-11-10 |  |  |  |  |  | as late as possible | Executive; External; Mechanical Team; Payload Team; PCB Team; Power Team; Radio Team; Software Team; Testing Team | 35448h |  |  |
| 46 | 3.1 | Sourcing and Ordering of Components | manual | 4w | 2012-08-18 | 2012-09-15 |  |  |  |  |  | as late as possible |  |  |  |  |
| 47 | 3.2 | PCB Manufacture | manual | 4w | 2012-08-18 | 2012-09-15 | 24, 25 |  |  |  |  |  | External | 672h |  |  |
| 48 | 3.3 | Critical Systems Software Testing | manual | 4w | 2012-08-18 | 2012-09-15 |  |  |  |  |  | as late as possible | Software Team | 672h |  |  |
| 49 | 3.4 | Communications Testing (Hardware Level) | manual | 4w | 2012-08-18 | 2012-09-15 |  |  |  |  |  | as late as possible | Radio Team | 672h |  |  |
| 50 | 3.5 | Communications Testing (Software Level) | manual | 4w | 2012-09-22 | 2012-10-20 | 48, 49 |  |  |  |  | as late as possible | Software Team; Radio Team | 1344h |  |  |
| 51 | 3.6 | PCB Population | manual | 6w | 2012-09-15 | 2012-10-27 | 47 |  |  |  |  | as late as possible | Payload Team; PCB Team; Power Team; Radio Team; External; Testing Team | 6048h |  |  |
| 52 | 3.7 | Telemetry testing and calibration | manual | 4w | 2012-10-06 | 2012-11-03 | 51SS |  |  |  |  | as late as possible | PCB Team; Software Team | 1344h |  |  |
| 53 | 3.8 | Satellite Assembly | manual | 5w | 2012-09-29 | 2012-11-03 | 51SS |  |  |  |  | as late as possible | Mechanical Team; Payload Team; PCB Team; Power Team; Radio Team; Software Team; Testing Team | 5880h |  |  |
| 54 | 3.9 | Generation of Final Function Test Specifications | manual | 3w | 2012-10-20 | 2012-11-10 | 49, 50 |  |  |  |  | as late as possible | External | 504h |  |  |
| 55 | 3.10 | Test Readiness Review | manual | 1w | 2012-11-03 | 2012-11-10 |  |  |  |  |  | as late as possible | Executive | 168h |  |  |

| ID | WBS | Task | Type | Duration | Start | Finish | Constraint | Resources | Work |
| --- | --- | --- | --- | --- | --- | --- | --- | --- | --- |
| 56 | 4 | **Qualification testing** |  | 15.77w | 2012-11-10 | 2013-02-28 | as late as possible |  | 4536h |
| 57 | 4.1 | Initial Functional Test | manual | 1w | 2012-11-11 | 2012-11-18 | as late as possible |  |  |
| 58 | 4.2 | Thermal Cycling Test | manual | 1w | 2012-11-18 | 2012-11-25 | as late as possible |  |  |
| 59 | 4.3 | Thermal Vacuum Testing Pt 1 | manual | 3w | 2012-11-25 | 2012-12-16 | as late as possible |  |  |
| 60 | 4.4 | Christmas | manual | 3w | 2012-12-16 | 2013-01-06 |  | Executive; External; Mechanical Team; Payload Team; PCB Team; Power Team; Radio Team; Software Team; Testing Team | 4536h |
| 61 | 4.5 | Thermal Vacuum Testing Pt 2 | manual | 4.62w | 2013-01-06 | 2013-02-07 | as late as possible |  |  |
| 62 | 4.6 | Mechanical Testing | manual | 1w | 2013-02-07 | 2013-02-14 | as late as possible |  |  |
| 63 | 4.7 | EMC and ESD testing | manual | 1w | 2013-02-14 | 2013-02-21 | as late as possible |  |  |
| 64 | 4.8 | Final Functional Test | manual | 1w | 2013-02-21 | 2013-02-28 | as late as possible |  |  |
| 65 | 5 | **Delivery and Launch** |  | 3.77w | 2013-02-02 | 2013-02-28 | as late as possible |  |  |
| 66 | 5.1 | <New Task> | manual | 1d | 2013-02-27 | 2013-02-28 | as late as possible |  |  |
| 67 | 6 | **Uni Timetable** |  | 411.38d | 2012-01-14 | 2013-02-28 | as late as possible |  |  |
| 68 | 6.1 | Summer Semester Stuvac | manual | 5.38d | 2012-01-28 | 2012-02-02 | as late as possible |  |  |
| 69 | 6.2 | Summer Semester Exams | manual | 8.38d | 2012-02-03 | 2012-02-11 | as late as possible |  |  |
| 70 | 6.3 | Semester 1 First Half | manual | 39.38d | 2012-02-27 | 2012-04-06 | as late as possible |  |  |
| 71 | 6.4 | Semester 1 Second Half | manual | 46.38d | 2012-04-16 | 2012-06-01 | as late as possible |  |  |
| 72 | 6.5 | Semester 1 Stuvac | manual | 5.38d | 2012-06-02 | 2012-06-07 | as late as possible |  |  |
| 73 | 6.6 | Semester 1 Exams | manual | 17.38d | 2012-06-08 | 2012-06-25 | as late as possible |  |  |
| 74 | 6.7 | Semester 2 First Half | manual | 6.77w | 2012-07-16 | 2012-09-01 | as late as possible |  |  |
| 75 | 6.8 | Semester 2 Second Half | manual | 5.77w | 2012-09-09 | 2012-10-19 | as late as possible |  |  |
| 76 | 6.9 | Semester 2 Stuvac | manual | 5.38d | 2012-10-20 | 2012-10-25 | as late as possible |  |  |
| 77 | 6.10 | Semester 2 Exams | manual | 18.38d | 2012-10-26 | 2012-11-13 | as late as possible |  |  |
